Task ID,Section,Description,Owner,Dependencies,Pre-requisites,Definition of Done,Status,KPIs,Target Sprint,Artifacts To Track,Validation Method,Estimate (O/M/P),Planned Start,Planned Finish,Percent Complete,Dependency Types,Cadence
GTM-001,Go-to-Market,"ICP & Personas Pack (target customers, job stories, objections)",PM + Marketing (STOA-Foundation),DOC-001,FILE:.specify/memory/Framework.md;FILE:audit-matrix.yml;ENV:Access to intended market assumptions; any existing customer discovery notes;FILE:docs/company/master-brief.md,"ICP definition (firmographics/technographics/constraints), 2–4 personas with job stories, triggers, pains, gains, buying process, and objections; includes “not ICP” exclusions; stored as tracked docs; verified by: pnpm lint; output: icp.md, personas.md, objections.md validated",Completed,ICP + ≥2 personas complete; ≥10 objections/answers; clear “not ICP” list; referenced by Sales assets,0,ARTIFACT:docs/company/go-to-market/icp.md;docs/company/go-to-market/personas.md;docs/company/go-to-market/objections.md;EVIDENCE:.specify/sprints/sprint-0/attestations/GTM-001/attestation.json,VALIDATE:pnpm lint,90/180/360,2025-12-16,2025-12-24,100,DOC-001:FS,
GTM-002,Go-to-Market,"Messaging Framework (positioning, value props, copy blocks)",PM + Marketing (STOA-Foundation),"GTM-001,BRAND-001",FILE:.specify/memory/Framework.md;FILE:audit-matrix.yml;ENV:Approval of ICP/personas; preliminary visual identity direction;FILE:docs/shared/review-checklist.md;FILE:docs/operations/pr-checklist.md;FILE:docs/company/go-to-market/icp.md;FILE:docs/company/brand/visual-identity.md,"Positioning statement, elevator pitch, key messages by persona, CTA library, website copy blocks (hero, features, pricing, security), and tone-of-voice rules; includes examples for consistent writing; verified by: pnpm lint; output: positioning.md, value-props.md, copy-blocks.md validated",Completed,Copy blocks cover all PG pages; tone guide ≤2 pages and actionable; ≤1 unresolved positioning decision,0,ARTIFACT:docs/company/messaging/positioning.md;docs/company/messaging/value-props.md;docs/company/messaging/copy-blocks.md;docs/company/messaging/cta-library.md;EVIDENCE:.specify/sprints/sprint-0/attestations/GTM-002/attestation.json,VALIDATE:pnpm lint;AUDIT:security-review,90/180/360,2025-12-18,2025-12-26,100,"GTM-001:FS,BRAND-001:FS",
SALES-001,Commercial Assets,Commercial Narrative + Pitch Deck Outline + One-Pager,owner,"GTM-002,BRAND-001",FILE:.specify/memory/Framework.md;FILE:audit-matrix.yml;POLICY:Agreement on positioning and visuals; selected distribution channel (web/demo/outreach);FILE:docs/operations/quality-gates.md;FILE:docs/company/messaging/positioning.md;FILE:docs/company/brand/visual-identity.md,"Deck outline (10–12 slides) with story arc, slide-by-slide content, and visual guidelines; plus one-pager (problem → solution → proof → CTA); includes a single canonical link to design source (Figma/Canva); verified by: pnpm lint",Backlog,Deck outline complete; one-pager complete; 1 internal review cycle; aligns with ICP/personas,24,ARTIFACT:docs/sales/pitch-deck-outline.md;docs/sales/one-pager.md;artifacts/misc/sales/pitch-deck-source-link.txt;ARTIFACT:artifacts/reports/SALES-001-quick-reference.md;ARTIFACT:artifacts/reports/SALES-001-validation-report.md;EVIDENCE:.specify/sprints/sprint-1/attestations/SALES-001/attestation.json,VALIDATE:pnpm lint,90/180/360,2026-11-15,2026-11-28,0,"GTM-002:FS,BRAND-001:FS",
SALES-002,Commercial Assets,"Sales Motion Playbook (outreach sequences, discovery + demo scripts)",Sales + CEO (STOA-Leadership),GTM-002,FILE:.specify/memory/Framework.md;FILE:audit-matrix.yml;ENV:Agreement on commercial narrative; chosen qualification framework (BANT/MEDDIC/etc.);FILE:docs/sales/pitch-deck-outline.md;FILE:docs/company/messaging/positioning.md,"Defined sales motion: lead sources, qualification steps, discovery script, demo script, objection handling, follow-up cadence; includes at least 2 outreach sequences (email + LinkedIn) and a handoff policy to implementation/support; artifacts: sales-motion-playbook.md, discovery-script.md, demo-script.md; verified by: pnpm lint",Completed,≥2 sequences ready; discovery+demo scripts usable end-to-end; first pilot run documented,2,ARTIFACT:docs/sales/sales-motion-playbook.md;docs/sales/discovery-script.md;docs/sales/demo-script.md;docs/sales/outreach-sequences.md;EVIDENCE:.specify/sprints/sprint-2/attestations/SALES-002/attestation.json,VALIDATE:pnpm lint;AUDIT:code-review,90/180/360,2026-01-11,2026-01-20,100,GTM-002:FS,
PM-OPS-001,Project Operations,"Project Operating Model & Delivery Playbook (cadence, WIP, ticket sizing, ABC)",Tech Lead + DevOps + Product Manager (STOA-Automation),"AUTOMATION-001,ENV-005-AI",FILE:.specify/memory/Framework.md;FILE:audit-matrix.yml;ENV:Agreement on repo workflow and tracker usage; availability of team roles and responsibilities;FILE:packages/db/prisma/schema.prisma;FILE:docs/shared/review-checklist.md;FILE:docs/operations/pr-checklist.md;FILE:docs/operations/project-playbook.md;FILE:infra/monitoring/orchestration-config.yaml;FILE:.github/workflows/ci.yml,"Documented end-to-end delivery model: stages, sequencing, WIP policy, ticket sizing guidance, ABC classification of work, acceptance criteria rules, and escalation path; includes RACI for Sprint 0–2; referenced by tracker UI/help pages; targets: >=100%; verified by: pnpm lint",Completed,WIP policy defined; ticket sizing heuristic defined; ABC coverage 100% of task types; RACI approved,0,ARTIFACT:docs/operations/project-playbook.md;docs/operations/wip-policy.md;docs/operations/ticket-sizing.md;docs/operations/abc-classification.md;docs/operations/raci.md;EVIDENCE:.specify/sprints/sprint-0/attestations/PM-OPS-001/attestation.json,VALIDATE:pnpm lint,90/180/360,2025-12-18,2025-12-26,100,"AUTOMATION-001:FS,ENV-005-AI:FS",
ENG-OPS-001,Engineering Operations,"Engineering Playbook (SDLC, PR rules, quality gates, release/rollback)",Tech Lead + DevOps + QA Lead (STOA-Quality),"ENV-002-AI,ENV-005-AI,ENV-010-AI",FILE:.specify/memory/Framework.md;FILE:audit-matrix.yml;ENV:CI pipeline baseline; lint/typecheck/test scripts present;FILE:docs/architecture/adr/ADR-005-workflow-engine.md;FILE:docs/shared/review-checklist.md;FILE:docs/operations/engineering-playbook.md;FILE:docs/operations/quality-gates.md;FILE:docs/operations/pr-checklist.md;FILE:docs/operations/release-rollback.md;FILE:eslint.config.mjs;FILE:.github/workflows/ci.yml,"Engineering handbook written: branching strategy, PR checklist, code review standards, required gates (audit-matrix Tier 1), release flow, rollback steps, incident basics, and docs conventions; includes strict vs local"" policy for WARN/FAIL""; verified by: pnpm lint",Completed,"PR checklist adopted; gate mapping complete; rollback procedure documented; ≤1 page fast path"" summary included""",0,ARTIFACT:docs/operations/engineering-playbook.md;docs/operations/quality-gates.md;docs/operations/pr-checklist.md;docs/operations/release-rollback.md;EVIDENCE:.specify/sprints/sprint-0/attestations/ENG-OPS-001/attestation.json,VALIDATE:pnpm lint,90/180/360,2025-12-18,2025-12-26,100,"ENV-002-AI:FS,ENV-005-AI:FS,ENV-010-AI:FS",
GOV-001,Architecture Governance,"Architecture Governance Pack (ADR + ARP templates, decision workflow, flowcharts)",Backend Dev + Architect (STOA-Domain),ENG-OPS-001,FILE:.specify/memory/Framework.md;FILE:audit-matrix.yml;ENV:Agreement on architecture conventions (C4/diagrams); decision authority clarified;FILE:docs/architecture/adr/ADR-001-modern-stack.md;FILE:docs/architecture/adr/ADR-005-workflow-engine.md;FILE:docs/architecture/hex-boundaries.md;FILE:docs/architecture/repo-layout.md;FILE:docs/planning/DDD-context-map.puml;FILE:docs/operations/quality-gates.md;FILE:docs/architecture/adr/template.md;FILE:docs/architecture/decision-workflow.md;FILE:docs/operations/engineering-playbook.md,"Created ADR template, ARP template, decision workflow, and diagram/flowchart conventions; includes folder structure, naming, and example ADR/ARP; defines when decisions are required and how to approve; verified by: pnpm lint",Completed,Templates published; workflow clear; at least 1 example ADR/ARP; adoption guide ≤1 page,1,ARTIFACT:docs/architecture/adr/template.md;docs/architecture/arp/000-template.md;docs/architecture/decision-workflow.md;docs/architecture/diagrams/README.md;docs/architecture/flowcharts/README.md;EVIDENCE:.specify/sprints/sprint-1/attestations/GOV-001/attestation.json,VALIDATE:pnpm lint,90/180/360,2025-12-28,2026-01-06,100,ENG-OPS-001:FS,
ANALYTICS-001,Analytics & Segmentation,Customer Segmentation Spec (RFM + ABC) + Event Taxonomy,PM + DA (STOA-Foundation),"DOC-001,GTM-001",FILE:.specify/memory/Framework.md;FILE:audit-matrix.yml;ENV:Access to ICP/personas; agreement on CRM prioritization goals; any existing analytics assumptions;FILE:docs/company/master-brief.md;FILE:docs/company/go-to-market/icp.md,"Defines RFM inputs/outputs, ABC curve methodology, segmentation thresholds, and event taxonomy; specifies dashboards, KPIs, and minimal instrumentation requirements to support CRM prioritization; includes data privacy notes and open questions log; artifacts: rfm-abc-spec.md, event-taxonomy.md, dashboards-requirements.md; verified by: pnpm lint",Completed,RFM/ABC spec complete; event taxonomy covers core flows; requirements mapped to ENV-016-AI + IFC-037/038; ≤5 open questions,0,ARTIFACT:docs/analytics/rfm-abc-spec.md;docs/analytics/event-taxonomy.md;docs/analytics/dashboards-requirements.md;EVIDENCE:.specify/sprints/sprint-0/attestations/ANALYTICS-001/attestation.json,VALIDATE:pnpm lint,90/180/360,2025-12-19,2025-12-27,100,"DOC-001:FS,GTM-001:FS",
PG-083,Core CRM,Calendar,ifc-ui-2,PG-080,FILE:.specify/memory/Framework.md;FILE:audit-matrix.yml;ENV:Calendar integration;ENV:scheduling;FILE:apps/web/src/app/(crm)/activities/page.tsx;FILE:docs/design/sitemap.md;FILE:docs/design/ui-flow-mapping.md;FILE:docs/design/page-registry.md;FILE:apps/project-tracker/docs/metrics/_global/flows/flow-index.md,"Response <200ms, Lighthouse ≥90, events synced; artifacts: page.tsx, calendar-view.tsx, event-scheduler.ts",Backlog,"Calendar working, events synced, scheduling functional",41,ARTIFACT:apps/web/src/app/calendar/(list)/page.tsx;ARTIFACT:apps/web/src/components/calendar/calendar-view.tsx;ARTIFACT:apps/web/src/lib/calendar/event-scheduler.ts;EVIDENCE:.specify/sprints/sprint-22/attestations/PG-083/context_ack.json,GATE:lighthouse-gte-90;VALIDATE:pnpm --filter @intelliflow/web typecheck;VALIDATE:pnpm --filter @intelliflow/web test --run,90/180/360,2027-07-11,2027-07-24,0,PG-080:FS,
PG-084,Core CRM,Emails Cross-entity scope: wire EmailCompose component (from PG-141) into Lead and Contact detail page Compose buttons. Pre-fill recipient with entity email. Replace activity-derived email list with real email integration data. Re-scoped 2026-10-21 (Category B; PG-207 owner ruling Q10): sending through the user's own Gmail/Outlook/SMTP mailbox is delivered by PG-207 (ADR-085 dispatchUserMail) so this task keeps the entity-page Compose wiring and the real email list.,ifc-074,PG-207,FILE:.specify/memory/Framework.md;FILE:audit-matrix.yml;ENV:Email integration;ENV:threading;FILE:artifacts/reports/connector-status-dashboard.json;FILE:docs/design/sitemap.md;FILE:docs/design/ui-flow-mapping.md;FILE:docs/design/page-registry.md;FILE:apps/project-tracker/docs/metrics/_global/flows/flow-index.md,"Response <200ms, Lighthouse ≥90, emails organized; artifacts: page.tsx, email-client.tsx, email-tracker.ts; Compose buttons on Lead/Contact detail pages open EmailCompose sheet; email list sourced from real integration",Backlog,"Emails integrated, threads working, tracking active",24,ARTIFACT:apps/web/src/app/emails/page.tsx;ARTIFACT:apps/web/src/components/email/email-client.tsx;ARTIFACT:apps/web/src/lib/email/email-tracker.ts;EVIDENCE:.specify/sprints/sprint-22/attestations/PG-084/context_ack.json,GATE:lighthouse-gte-90;VALIDATE:pnpm --filter @intelliflow/web typecheck;VALIDATE:pnpm --filter @intelliflow/web test --run,90/180/360,2026-11-15,2026-11-28,0,PG-207:FS,
PG-085,Core CRM,Email Templates (all auth/notification/in-app surfaces; findings: git issue #350 + debt EMAIL-BRAND-001/SEC-AUTH-NOTIF-001),ifc-ui-2,"PG-084,IFC-144",FILE:.specify/memory/Framework.md;FILE:audit-matrix.yml;ENV:Template builder;ENV:personalization;FILE:apps/web/src/app/(crm)/emails/page.tsx;FILE:docs/design/sitemap.md;FILE:docs/design/ui-flow-mapping.md;FILE:docs/design/page-registry.md;FILE:apps/project-tracker/docs/metrics/_global/flows/flow-index.md,"Response <200ms, Lighthouse ≥90, templates saved",Backlog,"Templates created, personalization working, sending enabled",42,ARTIFACT:apps/web/src/app/templates/email/page.tsx;ARTIFACT:apps/web/src/components/templates/template-builder.tsx;ARTIFACT:apps/web/src/lib/templates/personalization.ts;EVIDENCE:.specify/sprints/sprint-22/attestations/PG-085/context_ack.json,GATE:lighthouse-gte-90;VALIDATE:pnpm --filter @intelliflow/web typecheck;VALIDATE:pnpm --filter @intelliflow/web test --run,60/120/240,2027-07-25,2027-08-07,0,"PG-084:FS,IFC-144:FS",
PG-086,Core CRM,SMS Templates,ifc-ui-2,"PG-085,IFC-144",FILE:.specify/memory/Framework.md;FILE:audit-matrix.yml;ENV:SMS templates;ENV:compliance;FILE:apps/web/src/app/(crm)/templates/email/page.tsx;FILE:docs/design/sitemap.md;FILE:docs/design/ui-flow-mapping.md;FILE:docs/design/page-registry.md;FILE:apps/project-tracker/docs/metrics/_global/flows/flow-index.md,"Response <200ms, Lighthouse ≥90, SMS ready; artifacts: page.tsx, sms-builder.tsx, compliance-checker.ts",Backlog,"SMS templates created, compliance checked, sending enabled",43,ARTIFACT:apps/web/src/app/templates/sms/page.tsx;ARTIFACT:apps/web/src/components/templates/sms-builder.tsx;ARTIFACT:apps/web/src/lib/templates/compliance-checker.ts;EVIDENCE:.specify/sprints/sprint-22/attestations/PG-086/context_ack.json,GATE:lighthouse-gte-90;VALIDATE:pnpm --filter @intelliflow/web typecheck;VALIDATE:pnpm --filter @intelliflow/web test --run,60/120/240,2027-08-08,2027-08-21,0,"PG-085:FS,IFC-144:FS",
PG-087,Core CRM,Calls,ifc-ui-2,"IFC-099,IFC-144",FILE:.specify/memory/Framework.md;FILE:audit-matrix.yml;ENV:Call logging;ENV:recording integration;FILE:artifacts/reports/connector-status-dashboard.json;FILE:docs/design/sitemap.md;FILE:docs/design/ui-flow-mapping.md;FILE:docs/design/page-registry.md;FILE:apps/project-tracker/docs/metrics/_global/flows/flow-index.md,"Response <200ms, Lighthouse ≥90, calls tracked; artifacts: page.tsx, call-logger.tsx, recording-player.tsx",Backlog,"Calls logged, recordings linked, analytics shown",59,ARTIFACT:apps/web/src/app/calls/page.tsx;ARTIFACT:apps/web/src/components/calls/call-logger.tsx;ARTIFACT:apps/web/src/components/calls/recording-player.tsx;EVIDENCE:.specify/sprints/sprint-22/attestations/PG-087/context_ack.json,GATE:lighthouse-gte-90;VALIDATE:pnpm --filter @intelliflow/web typecheck;VALIDATE:pnpm --filter @intelliflow/web test --run,90/180/360,2028-03-19,2028-04-01,0,"IFC-099:FS,IFC-144:FS",
PG-088,Core CRM,Notes,ifc-ui-2,PG-080,FILE:.specify/memory/Framework.md;FILE:audit-matrix.yml;ENV:Note taking;ENV:mentions;ENV:sharing;FILE:apps/web/src/app/(crm)/activities/page.tsx;FILE:docs/design/sitemap.md;FILE:docs/design/ui-flow-mapping.md;FILE:docs/design/page-registry.md;FILE:apps/project-tracker/docs/metrics/_global/flows/flow-index.md,"Response <200ms, Lighthouse ≥90, notes saved; artifacts: page.tsx, note-editor.tsx, mention-handler.ts",Backlog,"Notes created, mentions working, sharing enabled",44,ARTIFACT:apps/web/src/app/notes/page.tsx;ARTIFACT:apps/web/src/components/notes/note-editor.tsx;ARTIFACT:apps/web/src/lib/notes/mention-handler.ts;EVIDENCE:.specify/sprints/sprint-23/attestations/PG-088/context_ack.json,GATE:lighthouse-gte-90;VALIDATE:pnpm --filter @intelliflow/web typecheck;VALIDATE:pnpm --filter @intelliflow/web test --run,60/120/240,2027-08-22,2027-09-04,0,PG-080:FS,
PG-089,Core CRM,Files Cross-entity scope: also wire file upload/download handlers on Lead detail (upload btn download btn) Contact detail (document section) and Deal detail (files section). Reuse upload/download infrastructure across all entity detail pages.,ifc-ui-2,IFC-094,FILE:.specify/memory/Framework.md;FILE:audit-matrix.yml;ENV:File management;ENV:versioning;FILE:artifacts/reports/e-signature-test.pdf;FILE:docs/design/sitemap.md;FILE:docs/design/ui-flow-mapping.md;FILE:docs/design/page-registry.md;FILE:apps/project-tracker/docs/metrics/_global/flows/flow-index.md,"Response <200ms, Lighthouse ≥90, files organized; File upload/download buttons functional on Lead Contact Deal detail pages in addition to standalone Files page",Backlog,"Files uploaded, versions tracked, sharing working",60,ARTIFACT:apps/web/src/app/files/page.tsx;ARTIFACT:apps/web/src/components/documents/file-manager.tsx;ARTIFACT:apps/web/src/lib/documents/version-control.ts;EVIDENCE:.specify/sprints/sprint-23/attestations/PG-089/context_ack.json,GATE:lighthouse-gte-90;VALIDATE:pnpm --filter @intelliflow/web typecheck;VALIDATE:pnpm --filter @intelliflow/web test --run,90/180/360,2028-04-02,2028-04-15,0,IFC-094:FS,
PG-090,Core CRM,File Detail,ifc-ui-2,PG-089,FILE:.specify/memory/Framework.md;FILE:audit-matrix.yml;ENV:File preview;ENV:metadata;ENV:sharing;FILE:apps/web/src/app/(crm)/files/page.tsx;FILE:docs/design/sitemap.md;FILE:docs/design/ui-flow-mapping.md;FILE:docs/design/page-registry.md;FILE:apps/project-tracker/docs/metrics/_global/flows/flow-index.md,"Response <200ms, Lighthouse ≥90, previews working; artifacts: page.tsx, file-preview.tsx, file-sharer.ts",Backlog,"Previews shown, metadata displayed, sharing enabled",60,ARTIFACT:apps/web/src/app/files/[id]/page.tsx;ARTIFACT:apps/web/src/components/documents/file-preview.tsx;ARTIFACT:apps/web/src/lib/documents/file-sharer.ts;EVIDENCE:.specify/sprints/sprint-23/attestations/PG-090/context_ack.json,AUDIT:code-review;GATE:lighthouse-gte-90,60/120/240,2028-04-02,2028-04-15,0,PG-089:FS,
PG-091,Core CRM,Products,ifc-ui-2,IFC-089,FILE:.specify/memory/Framework.md;FILE:audit-matrix.yml;ENV:Product catalog;ENV:categories;FILE:docs/shared/review-checklist.md;FILE:docs/operations/pr-checklist.md;FILE:apps/api/src/modules/contact/contact.router.ts;FILE:docs/design/sitemap.md;FILE:docs/design/ui-flow-mapping.md;FILE:docs/design/page-registry.md;FILE:apps/project-tracker/docs/metrics/_global/flows/flow-index.md,"Response <200ms, Lighthouse ≥90, catalog searchable; artifacts: page.tsx, product-catalog.tsx, product-search.ts",Backlog,"Products listed, categories working, search functional",44,ARTIFACT:apps/web/src/app/products/page.tsx;ARTIFACT:apps/web/src/components/products/product-catalog.tsx;ARTIFACT:apps/web/src/lib/products/product-search.ts;EVIDENCE:.specify/sprints/sprint-23/attestations/PG-091/context_ack.json,GATE:lighthouse-gte-90;VALIDATE:pnpm --filter @intelliflow/web typecheck;VALIDATE:pnpm --filter @intelliflow/web test --run,90/180/360,2027-08-22,2027-09-04,0,IFC-089:FS,
PG-092,Core CRM,Product Detail,ifc-ui-2,PG-091,FILE:.specify/memory/Framework.md;FILE:audit-matrix.yml;ENV:Product info;ENV:pricing;ENV:availability;FILE:docs/shared/review-checklist.md;FILE:docs/operations/pr-checklist.md;FILE:apps/web/src/app/(crm)/products/page.tsx;FILE:docs/design/sitemap.md;FILE:docs/design/ui-flow-mapping.md;FILE:docs/design/page-registry.md;FILE:apps/project-tracker/docs/metrics/_global/flows/flow-index.md,"Response <200ms, Lighthouse ≥90, details complete; artifacts: page.tsx, product-detail.tsx, availability-checker.ts",Backlog,"Details shown, pricing displayed, availability tracked",45,ARTIFACT:apps/web/src/app/products/[id]/page.tsx;ARTIFACT:apps/web/src/components/products/product-detail.tsx;ARTIFACT:apps/web/src/lib/products/availability-checker.ts;EVIDENCE:.specify/sprints/sprint-23/attestations/PG-092/context_ack.json,GATE:lighthouse-gte-90;VALIDATE:pnpm --filter @intelliflow/web typecheck;VALIDATE:pnpm --filter @intelliflow/web test --run,60/120/240,2027-09-05,2027-09-18,0,PG-091:FS,
PG-093,Core CRM,Price Books,ifc-ui-2,PG-091,FILE:.specify/memory/Framework.md;FILE:audit-matrix.yml;ENV:Price lists;ENV:discounts;ENV:rules;FILE:docs/shared/review-checklist.md;FILE:docs/operations/pr-checklist.md;FILE:apps/web/src/app/(crm)/products/page.tsx;FILE:docs/design/sitemap.md;FILE:docs/design/ui-flow-mapping.md;FILE:docs/design/page-registry.md;FILE:apps/project-tracker/docs/metrics/_global/flows/flow-index.md,"Response <200ms, Lighthouse ≥90, pricing accurate; artifacts: page.tsx, price-book-manager.tsx, discount-engine.ts",Backlog,"Price books created, discounts applied, rules enforced",45,ARTIFACT:apps/web/src/app/price-books/page.tsx;ARTIFACT:apps/web/src/components/products/price-book-manager.tsx;ARTIFACT:apps/web/src/lib/products/discount-engine.ts;EVIDENCE:.specify/sprints/sprint-23/attestations/PG-093/context_ack.json,GATE:lighthouse-gte-90;VALIDATE:pnpm --filter @intelliflow/web typecheck;VALIDATE:pnpm --filter @intelliflow/web test --run,90/180/360,2027-09-05,2027-09-18,0,PG-091:FS,
PG-094,Core CRM,Price Book Detail,ifc-ui-2,PG-093,FILE:.specify/memory/Framework.md;FILE:audit-matrix.yml;ENV:Price entries;ENV:effective dates;FILE:docs/shared/review-checklist.md;FILE:docs/operations/pr-checklist.md;FILE:apps/web/src/app/(crm)/price-books/page.tsx;FILE:docs/design/sitemap.md;FILE:docs/design/ui-flow-mapping.md;FILE:docs/design/page-registry.md;FILE:apps/project-tracker/docs/metrics/_global/flows/flow-index.md,"Response <200ms, Lighthouse ≥90, prices current; artifacts: page.tsx, price-book-detail.tsx, price-history.ts",Backlog,"Prices shown, dates effective, history tracked",46,ARTIFACT:apps/web/src/app/price-books/[id]/page.tsx;ARTIFACT:apps/web/src/components/products/price-book-detail.tsx;ARTIFACT:apps/web/src/lib/products/price-history.ts;EVIDENCE:.specify/sprints/sprint-24/attestations/PG-094/context_ack.json,GATE:lighthouse-gte-90;VALIDATE:pnpm --filter @intelliflow/web typecheck;VALIDATE:pnpm --filter @intelliflow/web test --run,60/120/240,2027-09-19,2027-10-02,0,PG-093:FS,
PG-095,Core CRM,Quotes,ifc-ui-2,PG-093,FILE:.specify/memory/Framework.md;FILE:audit-matrix.yml;ENV:Quote generation;ENV:approval flow;FILE:apps/web/src/app/(crm)/price-books/page.tsx;FILE:docs/design/sitemap.md;FILE:docs/design/ui-flow-mapping.md;FILE:docs/design/page-registry.md;FILE:apps/project-tracker/docs/metrics/_global/flows/flow-index.md,"Response <200ms, Lighthouse ≥90, quotes generated; artifacts: page.tsx, quote-list.tsx, quote-generator.ts",Backlog,"Quotes created, approvals working, PDFs generated",47,ARTIFACT:apps/web/src/app/quotes/page.tsx;ARTIFACT:apps/web/src/components/quotes/quote-list.tsx;ARTIFACT:apps/web/src/lib/quotes/quote-generator.ts;EVIDENCE:.specify/sprints/sprint-24/attestations/PG-095/context_ack.json,GATE:lighthouse-gte-90;VALIDATE:pnpm --filter @intelliflow/web typecheck;VALIDATE:pnpm --filter @intelliflow/web test --run,90/180/360,2027-10-03,2027-10-16,0,PG-093:FS,
PG-096,Core CRM,New Quote,ifc-ui-2,PG-095,FILE:.specify/memory/Framework.md;FILE:audit-matrix.yml;ENV:Quote builder;ENV:product selection;FILE:apps/web/src/app/(crm)/quotes/page.tsx;FILE:docs/design/sitemap.md;FILE:docs/design/ui-flow-mapping.md;FILE:docs/design/page-registry.md;FILE:apps/project-tracker/docs/metrics/_global/flows/flow-index.md,"Response <200ms, Lighthouse ≥90, calculations accurate; artifacts: page.tsx, quote-builder.tsx, quote-calculator.ts",Backlog,"Quotes built, products added, totals calculated",48,ARTIFACT:apps/web/src/app/quotes/new/page.tsx;ARTIFACT:apps/web/src/components/quotes/quote-builder.tsx;ARTIFACT:apps/web/src/lib/quotes/quote-calculator.ts;EVIDENCE:.specify/sprints/sprint-24/attestations/PG-096/context_ack.json,GATE:lighthouse-gte-90;VALIDATE:pnpm --filter @intelliflow/web typecheck;VALIDATE:pnpm --filter @intelliflow/web test --run,90/180/360,2027-10-17,2027-10-30,0,PG-095:FS,
PG-097,Core CRM,Quote Detail,ifc-ui-2,PG-095,FILE:.specify/memory/Framework.md;FILE:audit-matrix.yml;ENV:Quote view;ENV:version history;FILE:apps/web/src/app/(crm)/quotes/page.tsx;FILE:docs/design/sitemap.md;FILE:docs/design/ui-flow-mapping.md;FILE:docs/design/page-registry.md;FILE:apps/project-tracker/docs/metrics/_global/flows/flow-index.md,"Response <200ms, Lighthouse ≥90, versions tracked; artifacts: page.tsx, quote-detail.tsx, quote-versions.tsx",Backlog,"Details shown, versions tracked, actions available",48,ARTIFACT:apps/web/src/app/quotes/[id]/page.tsx;ARTIFACT:apps/web/src/components/quotes/quote-detail.tsx;ARTIFACT:apps/web/src/components/quotes/quote-versions.tsx;EVIDENCE:.specify/sprints/sprint-24/attestations/PG-097/context_ack.json,GATE:lighthouse-gte-90;VALIDATE:pnpm --filter @intelliflow/web typecheck;VALIDATE:pnpm --filter @intelliflow/web test --run,60/120/240,2027-10-17,2027-10-30,0,PG-095:FS,
PG-098,Core CRM,Edit Quote,ifc-ui-2,PG-097,FILE:.specify/memory/Framework.md;FILE:audit-matrix.yml;ENV:Quote editor;ENV:recalculation;FILE:apps/web/src/app/(crm)/quotes/[id]/page.tsx;FILE:docs/design/sitemap.md;FILE:docs/design/ui-flow-mapping.md;FILE:docs/design/page-registry.md;FILE:apps/project-tracker/docs/metrics/_global/flows/flow-index.md,"Response <200ms, Lighthouse ≥90, updates saved; artifacts: page.tsx, quote-editor.tsx, recalculator.ts",Backlog,"Edits working, recalculation automatic, history preserved",49,ARTIFACT:apps/web/src/app/quotes/[id]/edit/page.tsx;ARTIFACT:apps/web/src/components/quotes/quote-editor.tsx;ARTIFACT:apps/web/src/lib/quotes/recalculator.ts;EVIDENCE:.specify/sprints/sprint-24/attestations/PG-098/context_ack.json,GATE:lighthouse-gte-90;VALIDATE:pnpm --filter @intelliflow/web typecheck;VALIDATE:pnpm --filter @intelliflow/web test --run,60/120/240,2027-10-31,2027-11-13,0,PG-097:FS,
PG-099,Core CRM,Orders,ifc-ui-2,PG-095,FILE:.specify/memory/Framework.md;FILE:audit-matrix.yml;ENV:Order management;ENV:fulfillment;FILE:apps/web/src/app/(crm)/quotes/page.tsx;FILE:docs/design/sitemap.md;FILE:docs/design/ui-flow-mapping.md;FILE:docs/design/page-registry.md;FILE:apps/project-tracker/docs/metrics/_global/flows/flow-index.md,"Response <200ms, Lighthouse ≥90, orders tracked; artifacts: page.tsx, order-list.tsx, fulfillment-tracker.ts",Backlog,"Orders managed, fulfillment tracked, status updated",48,ARTIFACT:apps/web/src/app/orders/page.tsx;ARTIFACT:apps/web/src/components/orders/order-list.tsx;ARTIFACT:apps/web/src/lib/orders/fulfillment-tracker.ts;EVIDENCE:.specify/sprints/sprint-24/attestations/PG-099/context_ack.json,GATE:lighthouse-gte-90;VALIDATE:pnpm --filter @intelliflow/web typecheck;VALIDATE:pnpm --filter @intelliflow/web test --run,90/180/360,2027-10-17,2027-10-30,0,PG-095:FS,
PG-100,Core CRM,Order Detail,ifc-ui-2,PG-099,FILE:.specify/memory/Framework.md;FILE:audit-matrix.yml;ENV:Order view;ENV:shipment tracking;FILE:apps/web/src/app/(crm)/orders/page.tsx;FILE:docs/design/sitemap.md;FILE:docs/design/ui-flow-mapping.md;FILE:docs/design/page-registry.md;FILE:apps/project-tracker/docs/metrics/_global/flows/flow-index.md,"Response <200ms, Lighthouse ≥90, tracking live; artifacts: page.tsx, order-detail.tsx, shipment-tracker.ts",Backlog,"Details shown, shipments tracked, updates real-time",49,ARTIFACT:apps/web/src/app/orders/[id]/page.tsx;ARTIFACT:apps/web/src/components/orders/order-detail.tsx;ARTIFACT:apps/web/src/lib/orders/shipment-tracker.ts;EVIDENCE:.specify/sprints/sprint-25/attestations/PG-100/context_ack.json,GATE:lighthouse-gte-90;VALIDATE:pnpm --filter @intelliflow/web typecheck;VALIDATE:pnpm --filter @intelliflow/web test --run,60/120/240,2027-10-31,2027-11-13,0,PG-099:FS,
PG-101,Core CRM,Reports,ifc-ui-2,IFC-096,FILE:.specify/memory/Framework.md;FILE:audit-matrix.yml;ENV:Report library;ENV:favorites;FILE:docs/architecture/hex-boundaries.md;FILE:docs/design/sitemap.md;FILE:docs/design/ui-flow-mapping.md;FILE:docs/design/page-registry.md;FILE:apps/project-tracker/docs/metrics/_global/flows/flow-index.md,"Response <200ms, Lighthouse ≥90, reports accessible",Backlog,"Reports listed, favorites marked, generation quick",50,ARTIFACT:apps/web/src/app/reports/page.tsx;ARTIFACT:apps/web/src/components/reports/report-library.tsx;ARTIFACT:apps/web/src/lib/reports/report-favorites.ts;EVIDENCE:.specify/sprints/sprint-25/attestations/PG-101/context_ack.json,GATE:lighthouse-gte-90;VALIDATE:pnpm --filter @intelliflow/web typecheck;VALIDATE:pnpm --filter @intelliflow/web test --run,90/180/360,2027-11-14,2027-11-27,0,IFC-096:FS,
PG-102,Core CRM,Custom Reports,ifc-ui-2,IFC-096,FILE:.specify/memory/Framework.md;FILE:audit-matrix.yml;ENV:Report builder;ENV:visualizations;FILE:docs/architecture/hex-boundaries.md;FILE:docs/design/sitemap.md;FILE:docs/design/ui-flow-mapping.md;FILE:docs/design/page-registry.md;FILE:apps/project-tracker/docs/metrics/_global/flows/flow-index.md,"Response <200ms, Lighthouse ≥90, builder intuitive; artifacts: page.tsx, report-builder.tsx, visualization-engine.ts; verified by: pnpm build",Backlog,"Builder working, visualizations rendered, exports enabled",50,ARTIFACT:apps/web/src/app/reports/custom/page.tsx;ARTIFACT:apps/web/src/components/reports/report-builder.tsx;ARTIFACT:apps/web/src/lib/reports/visualization-engine.ts;EVIDENCE:.specify/sprints/sprint-25/attestations/PG-102/context_ack.json,VALIDATE:pnpm build;GATE:lighthouse-gte-90,120/240/480,2027-11-14,2027-11-27,0,IFC-096:FS,
PG-103,Core CRM,Report Schedules,ifc-ui-2,PG-102,FILE:.specify/memory/Framework.md;FILE:audit-matrix.yml;ENV:Schedule config;ENV:distribution;FILE:apps/web/src/app/(crm)/reports/custom/page.tsx;FILE:docs/design/sitemap.md;FILE:docs/design/ui-flow-mapping.md;FILE:docs/design/page-registry.md;FILE:apps/project-tracker/docs/metrics/_global/flows/flow-index.md,"Response <200ms, Lighthouse ≥90, schedules running; artifacts: page.tsx, schedule-manager.tsx, distribution-engine.ts",Backlog,"Schedules created, distribution working, history tracked",51,ARTIFACT:apps/web/src/app/reports/schedules/page.tsx;ARTIFACT:apps/web/src/components/reports/schedule-manager.tsx;ARTIFACT:apps/web/src/lib/reports/distribution-engine.ts;EVIDENCE:.specify/sprints/sprint-25/attestations/PG-103/context_ack.json,GATE:lighthouse-gte-90;VALIDATE:pnpm --filter @intelliflow/web typecheck;VALIDATE:pnpm --filter @intelliflow/web test --run,60/120/240,2027-11-28,2027-12-11,0,PG-102:FS,
PG-104,Settings,Settings Home,Platform FE+BE (STOA-Foundation),IFC-076,FILE:.specify/memory/Framework.md;FILE:audit-matrix.yml;ENV:Settings navigation;ENV:search;FILE:artifacts/reports/accessibility-audit.json;FILE:docs/design/sitemap.md;FILE:docs/design/ui-flow-mapping.md;FILE:docs/design/page-registry.md;FILE:apps/project-tracker/docs/metrics/_global/flows/flow-index.md,"Response <200ms, Lighthouse ≥90, navigation clear; artifacts: page.tsx, settings-nav.tsx, settings-search.ts",Completed,"Settings organized, search working, changes tracked",13,ARTIFACT:apps/web/src/app/settings/page.tsx;ARTIFACT:apps/web/src/components/shared/settings-nav.tsx;ARTIFACT:apps/web/src/lib/shared/settings-search.ts;EVIDENCE:.specify/sprints/sprint-13/attestations/PG-104/attestation.json,GATE:lighthouse-gte-90;VALIDATE:pnpm --filter @intelliflow/web typecheck;VALIDATE:pnpm --filter @intelliflow/web test --run,60/120/240,2026-06-21,2026-06-25,100,IFC-076:FS,
PG-105,Settings,Profile Settings,ifc-ui-2,PG-104,FILE:.specify/memory/Framework.md;FILE:audit-matrix.yml;ENV:Profile editor;ENV:avatar upload;FILE:docs/shared/review-checklist.md;FILE:docs/operations/pr-checklist.md;FILE:apps/web/src/app/settings/page.tsx;FILE:docs/design/sitemap.md;FILE:docs/design/ui-flow-mapping.md;FILE:docs/design/page-registry.md;FILE:apps/project-tracker/docs/metrics/_global/flows/flow-index.md,"Response <200ms, Lighthouse ≥90, profile updated",Backlog,"Profile editable, avatar uploaded, preferences saved",50,ARTIFACT:apps/web/src/app/settings/profile/page.tsx;ARTIFACT:apps/web/src/components/settings/profile-editor.tsx;ARTIFACT:apps/web/src/lib/settings/avatar-uploader.ts;EVIDENCE:.specify/sprints/sprint-25/attestations/PG-105/context_ack.json,GATE:lighthouse-gte-90;VALIDATE:pnpm --filter @intelliflow/web typecheck;VALIDATE:pnpm --filter @intelliflow/web test --run,60/120/240,2027-11-14,2027-11-27,0,PG-104:FS,
PG-106,Settings,Account Settings,ifc-ui-2,PG-104,FILE:.specify/memory/Framework.md;FILE:audit-matrix.yml;ENV:Account management;ENV:deletion;FILE:apps/web/src/app/settings/page.tsx;FILE:docs/design/sitemap.md;FILE:docs/design/ui-flow-mapping.md;FILE:docs/design/page-registry.md;FILE:apps/project-tracker/docs/metrics/_global/flows/flow-index.md,"Response <200ms, Lighthouse ≥90, account managed; artifacts: page.tsx, account-manager.tsx, account-export.ts",Backlog,"Account editable, deletion working, export enabled",52,ARTIFACT:apps/web/src/app/settings/account/page.tsx;ARTIFACT:apps/web/src/components/settings/account-manager.tsx;ARTIFACT:apps/web/src/lib/settings/account-export.ts;EVIDENCE:.specify/sprints/sprint-26/attestations/PG-106/context_ack.json,GATE:lighthouse-gte-90;VALIDATE:pnpm --filter @intelliflow/web typecheck;VALIDATE:pnpm --filter @intelliflow/web test --run,60/120/240,2027-12-12,2027-12-25,0,PG-104:FS,
PG-107,Settings,Organization Settings,ifc-ui-2,PG-104,FILE:.specify/memory/Framework.md;FILE:audit-matrix.yml;ENV:Org config;ENV:branding;FILE:apps/web/src/app/settings/page.tsx;FILE:docs/design/sitemap.md;FILE:docs/design/ui-flow-mapping.md;FILE:docs/design/page-registry.md;FILE:apps/project-tracker/docs/metrics/_global/flows/flow-index.md,"Response <200ms, Lighthouse ≥90, org configured",Backlog,"Org configured, branding applied, settings saved",52,ARTIFACT:apps/web/src/app/settings/organization/page.tsx;ARTIFACT:apps/web/src/components/settings/org-config.tsx;ARTIFACT:apps/web/src/lib/settings/branding-manager.ts;EVIDENCE:.specify/sprints/sprint-26/attestations/PG-107/context_ack.json,GATE:lighthouse-gte-90;VALIDATE:pnpm --filter @intelliflow/web typecheck;VALIDATE:pnpm --filter @intelliflow/web test --run,60/120/240,2027-12-12,2027-12-25,0,PG-104:FS,
PG-108,Settings,Users,ifc-ui-2,"IFC-098,IFC-201",FILE:.specify/memory/Framework.md;FILE:audit-matrix.yml;ENV:User management;ENV:invites;FILE:packages/db/prisma/schema-audit.prisma;FILE:docs/design/sitemap.md;FILE:docs/design/ui-flow-mapping.md;FILE:docs/design/page-registry.md;FILE:apps/project-tracker/docs/metrics/_global/flows/flow-index.md,"Response <200ms, Lighthouse ≥90, users managed; artifacts: page.tsx, user-manager.tsx, invite-sender.ts",Backlog,"Users listed, invites sent, roles assigned",52,ARTIFACT:apps/web/src/app/settings/users/page.tsx;ARTIFACT:apps/web/src/components/settings/user-manager.tsx;ARTIFACT:apps/web/src/lib/settings/invite-sender.ts;EVIDENCE:.specify/sprints/sprint-26/attestations/PG-108/context_ack.json,GATE:lighthouse-gte-90;VALIDATE:pnpm --filter @intelliflow/web typecheck;VALIDATE:pnpm --filter @intelliflow/web test --run,90/180/360,2027-12-12,2027-12-25,0,"IFC-098:FS,IFC-201:FS",
PG-109,Settings,Roles,ifc-ui-2,"IFC-098,IFC-201",FILE:.specify/memory/Framework.md;FILE:audit-matrix.yml;ENV:Role editor;ENV:permissions;FILE:packages/db/prisma/schema-audit.prisma;FILE:docs/design/sitemap.md;FILE:docs/design/ui-flow-mapping.md;FILE:docs/design/page-registry.md;FILE:apps/project-tracker/docs/metrics/_global/flows/flow-index.md,"Response <200ms, Lighthouse ≥90, roles configured",Backlog,"Roles created, permissions set, inheritance working",53,ARTIFACT:apps/web/src/app/settings/roles/page.tsx;ARTIFACT:apps/web/src/components/settings/role-editor.tsx;ARTIFACT:apps/web/src/lib/settings/permission-manager.ts;EVIDENCE:.specify/sprints/sprint-26/attestations/PG-109/context_ack.json,GATE:lighthouse-gte-90;VALIDATE:pnpm --filter @intelliflow/web typecheck;VALIDATE:pnpm --filter @intelliflow/web test --run,90/180/360,2027-12-26,2028-01-08,0,"IFC-098:FS,IFC-201:FS",
PG-110,Settings,Permissions,ifc-ui-2,"PG-109,IFC-201",FILE:.specify/memory/Framework.md;FILE:audit-matrix.yml;ENV:Permission matrix;ENV:testing;FILE:apps/web/src/app/settings/roles/page.tsx;FILE:docs/design/sitemap.md;FILE:docs/design/ui-flow-mapping.md;FILE:docs/design/page-registry.md;FILE:apps/project-tracker/docs/metrics/_global/flows/flow-index.md,"Response <200ms, Lighthouse ≥90, permissions enforced; artifacts: page.tsx, permission-matrix.tsx, permission-tester.ts; verified by: pnpm test",Backlog,"Permissions configured, testing enabled, enforcement active",54,ARTIFACT:apps/web/src/app/settings/permissions/page.tsx;ARTIFACT:apps/web/src/components/settings/permission-matrix.tsx;ARTIFACT:apps/web/src/lib/settings/permission-tester.ts;EVIDENCE:.specify/sprints/sprint-26/attestations/PG-110/context_ack.json,VALIDATE:pnpm test;GATE:lighthouse-gte-90,90/180/360,2028-01-09,2028-01-22,0,"PG-109:FS,IFC-201:FS",
PG-111,Settings,Teams,ifc-ui-2,"PG-108,IFC-201",FILE:.specify/memory/Framework.md;FILE:audit-matrix.yml;ENV:Team structure;ENV:hierarchy;FILE:apps/web/src/app/settings/users/page.tsx;FILE:docs/design/sitemap.md;FILE:docs/design/ui-flow-mapping.md;FILE:docs/design/page-registry.md;FILE:apps/project-tracker/docs/metrics/_global/flows/flow-index.md,"Response <200ms, Lighthouse ≥90, teams organized; artifacts: page.tsx, team-manager.tsx, hierarchy-builder.ts",Backlog,"Teams created, hierarchy set, members assigned",53,ARTIFACT:apps/web/src/app/settings/teams/page.tsx;ARTIFACT:apps/web/src/components/settings/team-manager.tsx;ARTIFACT:apps/web/src/lib/settings/hierarchy-builder.ts;EVIDENCE:.specify/sprints/sprint-26/attestations/PG-111/context_ack.json,GATE:lighthouse-gte-90;VALIDATE:pnpm --filter @intelliflow/web typecheck;VALIDATE:pnpm --filter @intelliflow/web test --run,60/120/240,2027-12-26,2028-01-08,0,"PG-108:FS,IFC-201:FS",
PG-112,Settings,Audit Log,ifc-ui-2,"IFC-098,IFC-124,IFC-201",FILE:.specify/memory/Framework.md;FILE:audit-matrix.yml;ENV:Activity tracking;ENV:filtering;FILE:docs/architecture/adr/ADR-008-audit-logging.md;FILE:packages/db/prisma/schema-audit.prisma;FILE:apps/api/src/shared/apps/api/src/shared/audit-encryption-module.ts;FILE:docs/design/sitemap.md;FILE:docs/design/ui-flow-mapping.md;FILE:docs/design/page-registry.md;FILE:apps/project-tracker/docs/metrics/_global/flows/flow-index.md,"Response <200ms, Lighthouse ≥90, logs searchable; artifacts: page.tsx, audit-viewer.tsx, log-exporter.ts",Backlog,"Logs captured, filtering working, export enabled",54,ARTIFACT:apps/web/src/app/settings/audit-log/page.tsx;ARTIFACT:apps/web/src/components/settings/audit-viewer.tsx;ARTIFACT:apps/web/src/lib/settings/log-exporter.ts;EVIDENCE:.specify/sprints/sprint-27/attestations/PG-112/context_ack.json,GATE:lighthouse-gte-90;VALIDATE:pnpm --filter @intelliflow/web typecheck;VALIDATE:pnpm --filter @intelliflow/web test --run,90/180/360,2028-01-09,2028-01-22,0,"IFC-098:FS,IFC-124:FS,IFC-201:FS",
PG-113,Settings,API Keys,ifc-ui-2,PG-104,FILE:.specify/memory/Framework.md;FILE:audit-matrix.yml;ENV:Key generation;ENV:scopes;FILE:apps/web/src/app/settings/page.tsx;FILE:docs/design/sitemap.md;FILE:docs/design/ui-flow-mapping.md;FILE:docs/design/page-registry.md;FILE:apps/project-tracker/docs/metrics/_global/flows/flow-index.md,"Response <200ms, Lighthouse ≥90, keys secure; artifacts: page.tsx, key-generator.tsx, scope-manager.ts",Backlog,"Keys generated, scopes enforced, rotation enabled",54,ARTIFACT:apps/web/src/app/settings/api-keys/page.tsx;ARTIFACT:apps/web/src/components/settings/key-generator.tsx;ARTIFACT:apps/web/src/lib/settings/scope-manager.ts;EVIDENCE:.specify/sprints/sprint-27/attestations/PG-113/context_ack.json,GATE:lighthouse-gte-90;VALIDATE:pnpm --filter @intelliflow/web typecheck;VALIDATE:pnpm --filter @intelliflow/web test --run,60/120/240,2028-01-09,2028-01-22,0,PG-104:FS,
PG-114,Settings,Webhooks,ifc-ui-2,"IFC-099,IFC-201",FILE:.specify/memory/Framework.md;FILE:audit-matrix.yml;ENV:Webhook config;ENV:testing;FILE:artifacts/reports/connector-status-dashboard.json;FILE:docs/design/sitemap.md;FILE:docs/design/ui-flow-mapping.md;FILE:docs/design/page-registry.md;FILE:apps/project-tracker/docs/metrics/_global/flows/flow-index.md,"Response <200ms, Lighthouse ≥90, webhooks firing; artifacts: page.tsx, webhook-config.tsx, webhook-tester.ts; verified by: pnpm test",Backlog,"Webhooks configured, testing enabled, logs available",55,ARTIFACT:apps/web/src/app/settings/webhooks/page.tsx;ARTIFACT:apps/web/src/components/settings/webhook-config.tsx;ARTIFACT:apps/web/src/lib/settings/webhook-tester.ts;EVIDENCE:.specify/sprints/sprint-27/attestations/PG-114/context_ack.json,VALIDATE:pnpm test;GATE:lighthouse-gte-90,90/180/360,2028-01-23,2028-02-05,0,"IFC-099:FS,IFC-201:FS",
PG-115,Settings,Integrations,ifc-ui-2,"IFC-099,IFC-201",FILE:.specify/memory/Framework.md;FILE:audit-matrix.yml;ENV:Integration catalog;ENV:OAuth;FILE:artifacts/reports/connector-status-dashboard.json;FILE:docs/design/sitemap.md;FILE:docs/design/ui-flow-mapping.md;FILE:docs/design/page-registry.md;FILE:apps/project-tracker/docs/metrics/_global/flows/flow-index.md,"Response <200ms, Lighthouse ≥90, integrations connected; artifacts: page.tsx, integration-catalog.tsx, oauth-handler.ts; verified by: pnpm test:integration",Backlog,"Integrations listed, OAuth working, sync active",55,ARTIFACT:apps/web/src/app/settings/integrations/page.tsx;ARTIFACT:apps/web/src/components/settings/integration-catalog.tsx;ARTIFACT:apps/web/src/lib/settings/oauth-handler.ts;EVIDENCE:.specify/sprints/sprint-27/attestations/PG-115/context_ack.json,VALIDATE:pnpm test:integration;GATE:lighthouse-gte-90,90/180/360,2028-01-23,2028-02-05,0,"IFC-099:FS,IFC-201:FS",
PG-116,Settings,Notifications,ifc-ui-2,PG-104,FILE:.specify/memory/Framework.md;FILE:audit-matrix.yml;ENV:Notification preferences;ENV:channels;FILE:apps/web/src/app/settings/page.tsx;FILE:docs/design/sitemap.md;FILE:docs/design/ui-flow-mapping.md;FILE:docs/design/page-registry.md;FILE:apps/project-tracker/docs/metrics/_global/flows/flow-index.md,"Response <200ms, Lighthouse ≥90, preferences saved; artifacts: page.tsx, notification-prefs.tsx, channel-config.ts",Backlog,"Preferences set, channels configured, delivery working",55,ARTIFACT:apps/web/src/app/settings/notifications/page.tsx;ARTIFACT:apps/web/src/components/notifications/notification-prefs.tsx;ARTIFACT:apps/web/src/lib/notifications/channel-config.ts;EVIDENCE:.specify/sprints/sprint-27/attestations/PG-116/context_ack.json,GATE:lighthouse-gte-90;VALIDATE:pnpm --filter @intelliflow/web typecheck;VALIDATE:pnpm --filter @intelliflow/web test --run,60/120/240,2028-01-23,2028-02-05,0,PG-104:FS,
PG-117,Settings,Localization,ifc-ui-2,PG-104,FILE:.specify/memory/Framework.md;FILE:audit-matrix.yml;ENV:Language settings;ENV:translations;FILE:apps/web/src/app/settings/page.tsx;FILE:docs/design/sitemap.md;FILE:docs/design/ui-flow-mapping.md;FILE:docs/design/page-registry.md;FILE:apps/project-tracker/docs/metrics/_global/flows/flow-index.md,"Response <200ms, Lighthouse ≥90, languages switched; artifacts: page.tsx, language-selector.tsx, translation-manager.ts",Backlog,"Languages configured, translations loaded, switching smooth",56,ARTIFACT:apps/web/src/app/settings/localization/page.tsx;ARTIFACT:apps/web/src/components/settings/language-selector.tsx;ARTIFACT:apps/web/src/lib/settings/translation-manager.ts;EVIDENCE:.specify/sprints/sprint-27/attestations/PG-117/context_ack.json,GATE:lighthouse-gte-90;VALIDATE:pnpm --filter @intelliflow/web typecheck;VALIDATE:pnpm --filter @intelliflow/web test --run,60/120/240,2028-02-06,2028-02-19,0,PG-104:FS,
PG-118,Settings,Data Retention,ifc-ui-2,IFC-058,FILE:.specify/memory/Framework.md;FILE:audit-matrix.yml;ENV:Retention policies;ENV:automation;FILE:docs/architecture/adr/ADR-007-data-governance.md;FILE:artifacts/reports/gdpr-compliance-checklist.xlsx;FILE:docs/design/sitemap.md;FILE:docs/design/ui-flow-mapping.md;FILE:docs/design/page-registry.md;FILE:apps/project-tracker/docs/metrics/_global/flows/flow-index.md,"Response <200ms, Lighthouse ≥90, policies enforced; artifacts: page.tsx, retention-policy.tsx, data-purger.ts",Backlog,"Policies configured, automation working, compliance met",56,ARTIFACT:apps/web/src/app/settings/data-retention/page.tsx;ARTIFACT:apps/web/src/components/settings/retention-policy.tsx;ARTIFACT:apps/web/src/lib/settings/data-purger.ts;EVIDENCE:.specify/sprints/sprint-28/attestations/PG-118/context_ack.json,GATE:lighthouse-gte-90;VALIDATE:pnpm --filter @intelliflow/web typecheck;VALIDATE:pnpm --filter @intelliflow/web test --run,90/180/360,2028-02-06,2028-02-19,0,IFC-058:FS,
PG-119,Settings,Compliance,ifc-ui-2,IFC-058,FILE:.specify/memory/Framework.md;FILE:audit-matrix.yml;ENV:Compliance dashboard;ENV:reports;FILE:docs/architecture/adr/ADR-008-audit-logging.md;FILE:artifacts/reports/gdpr-compliance-checklist.xlsx;FILE:docs/design/sitemap.md;FILE:docs/design/ui-flow-mapping.md;FILE:docs/design/page-registry.md;FILE:apps/project-tracker/docs/metrics/_global/flows/flow-index.md,"Response <200ms, Lighthouse ≥90, compliance tracked; artifacts: page.tsx, compliance-dashboard.tsx, audit-reporter.ts",Backlog,"Dashboard live, reports generated, audits passed",56,ARTIFACT:apps/web/src/app/settings/compliance/page.tsx;ARTIFACT:apps/web/src/components/settings/compliance-dashboard.tsx;ARTIFACT:apps/web/src/lib/settings/audit-reporter.ts;EVIDENCE:.specify/sprints/sprint-28/attestations/PG-119/context_ack.json,GATE:lighthouse-gte-90;VALIDATE:pnpm --filter @intelliflow/web typecheck;VALIDATE:pnpm --filter @intelliflow/web test --run,90/180/360,2028-02-06,2028-02-19,0,IFC-058:FS,
PG-120,Settings,Security,ifc-ui-2,"IFC-072,IFC-201",FILE:.specify/memory/Framework.md;FILE:audit-matrix.yml;ENV:Security settings;ENV:2FA config;FILE:docs/security/zero-trust-design.md;FILE:docs/design/sitemap.md;FILE:docs/design/ui-flow-mapping.md;FILE:docs/design/page-registry.md;FILE:apps/project-tracker/docs/metrics/_global/flows/flow-index.md,"Response <200ms, Lighthouse ≥90, security enforced; artifacts: page.tsx, security-config.tsx, 2fa-manager.ts",Backlog,"Settings configured, 2FA working, policies enforced",57,ARTIFACT:apps/web/src/app/settings/security/page.tsx;ARTIFACT:apps/web/src/components/security/security-config.tsx;ARTIFACT:apps/web/src/lib/security/2fa-manager.ts;EVIDENCE:.specify/sprints/sprint-28/attestations/PG-120/context_ack.json,GATE:lighthouse-gte-90;AUDIT:security-review;VALIDATE:pnpm --filter @intelliflow/web typecheck;VALIDATE:pnpm --filter @intelliflow/web test --run,120/240/480,2028-02-20,2028-03-04,0,"IFC-072:FS,IFC-201:FS",
PG-121,Settings,Import/Export,ifc-ui-2,IFC-070,FILE:.specify/memory/Framework.md;FILE:audit-matrix.yml;ENV:Data import/export tools;FILE:artifacts/reports/data-validation-report.csv;FILE:docs/design/sitemap.md;FILE:docs/design/ui-flow-mapping.md;FILE:docs/design/page-registry.md;FILE:apps/project-tracker/docs/metrics/_global/flows/flow-index.md,"Response <200ms, Lighthouse ≥90, transfers working; artifacts: page.tsx, data-importer.tsx, data-exporter.ts",Backlog,"Imports processed, exports generated, mappings saved",57,ARTIFACT:apps/web/src/app/settings/import-export/page.tsx;ARTIFACT:apps/web/src/components/settings/data-importer.tsx;ARTIFACT:apps/web/src/lib/settings/data-exporter.ts;EVIDENCE:.specify/sprints/sprint-28/attestations/PG-121/context_ack.json,GATE:lighthouse-gte-90;VALIDATE:pnpm --filter @intelliflow/web typecheck;VALIDATE:pnpm --filter @intelliflow/web test --run,90/180/360,2028-02-20,2028-03-04,0,IFC-070:FS,
PG-122,Settings,Privacy Export,ifc-ui-2,IFC-058,FILE:.specify/memory/Framework.md;FILE:audit-matrix.yml;ENV:GDPR export;ENV:data packages;FILE:docs/shared/review-checklist.md;FILE:docs/operations/pr-checklist.md;FILE:artifacts/reports/gdpr-compliance-checklist.xlsx;FILE:docs/design/sitemap.md;FILE:docs/design/ui-flow-mapping.md;FILE:docs/design/page-registry.md;FILE:apps/project-tracker/docs/metrics/_global/flows/flow-index.md,"Response <200ms, Lighthouse ≥90, exports compliant; artifacts: page.tsx, privacy-exporter.tsx, gdpr-packager.ts",Backlog,"Exports generated, packages complete, GDPR compliant",57,ARTIFACT:apps/web/src/app/settings/privacy/export/page.tsx;ARTIFACT:apps/web/src/components/settings/privacy-exporter.tsx;ARTIFACT:apps/web/src/lib/settings/gdpr-packager.ts;EVIDENCE:.specify/sprints/sprint-28/attestations/PG-122/context_ack.json,GATE:lighthouse-gte-90;VALIDATE:pnpm --filter @intelliflow/web typecheck;VALIDATE:pnpm --filter @intelliflow/web test --run,90/180/360,2028-02-20,2028-03-04,0,IFC-058:FS,
PG-123,Settings,Privacy Delete,ifc-ui-2,IFC-058,FILE:.specify/memory/Framework.md;FILE:audit-matrix.yml;ENV:Right to erasure;ENV:confirmation;FILE:docs/shared/review-checklist.md;FILE:docs/operations/pr-checklist.md;FILE:artifacts/reports/gdpr-compliance-checklist.xlsx;FILE:docs/design/sitemap.md;FILE:docs/design/ui-flow-mapping.md;FILE:docs/design/page-registry.md;FILE:apps/project-tracker/docs/metrics/_global/flows/flow-index.md,"Response <200ms, Lighthouse ≥90, deletion complete; artifacts: page.tsx, data-eraser.tsx, deletion-audit.ts",Backlog,"Deletion working, confirmation required, audit logged",58,ARTIFACT:apps/web/src/app/settings/privacy/delete/page.tsx;ARTIFACT:apps/web/src/components/settings/data-eraser.tsx;ARTIFACT:apps/web/src/lib/settings/deletion-audit.ts;EVIDENCE:.specify/sprints/sprint-28/attestations/PG-123/context_ack.json,GATE:lighthouse-gte-90;VALIDATE:pnpm --filter @intelliflow/web typecheck;VALIDATE:pnpm --filter @intelliflow/web test --run,90/180/360,2028-03-05,2028-03-18,0,IFC-058:FS,
IFC-101,Validation,PHASE-039: Lead Aggregate and Value Objects,Backend Dev + Tech Lead (STOA-Domain),IFC-002,FILE:.specify/memory/Framework.md;FILE:audit-matrix.yml;POLICY:Bounded contexts defined;POLICY:IFC-002 completed;FILE:docs/planning/DDD-context-map.puml;FILE:packages/db/prisma/schema.prisma;FILE:docs/development/tdd-guidelines.md;FILE:docs/shared/review-checklist.md;FILE:docs/operations/quality-gates.md,"Lead aggregate, value objects, repository interfaces and domain services implemented; artifacts: PrismaLeadRepository.ts, context_ack.json; targets: >=90%; verified by: pnpm test, pnpm test:integration",Completed,"Design approved, unit tests ≥90% coverage, repository API stable",2,ARTIFACT:packages/adapters/src/repositories/PrismaLeadRepository.ts;ARTIFACT:packages/domain/src/**;ARTIFACT:apps/project-tracker/docs/metrics/_global/phase-validations/PHASE-039-validation.md;EVIDENCE:.specify/sprints/sprint-2/attestations/IFC-101/attestation.json;ARTIFACT:docs/architecture/adr/ADR-019-core-crm-foundation.md;ARTIFACT:docs/planning/prd-core-crm.md;ARTIFACT:packages/domain/src/shared/__tests__/AggregateRoot.test.ts;ARTIFACT:packages/domain/src/shared/__tests__/DomainEvent.test.ts;ARTIFACT:packages/domain/src/shared/__tests__/Entity.test.ts;ARTIFACT:packages/domain/src/shared/__tests__/ValueObject.test.ts;ARTIFACT:packages/domain/src/shared/__tests__/Result.test.ts,VALIDATE:pnpm test;VALIDATE:pnpm test:integration;AUDIT:design-review;AUDIT:code-review,120/240/480,2026-01-11,2026-01-20,100,IFC-002:FS,
IFC-102,Validation,PHASE-039: Contact Aggregate and Value Objects,Backend Dev + Tech Lead (STOA-Domain),IFC-002,IMPLEMENTS:FLOW-021;FILE:.specify/memory/Framework.md;FILE:audit-matrix.yml;POLICY:Bounded contexts defined;POLICY:IFC-002 completed;FILE:docs/planning/DDD-context-map.puml;FILE:packages/db/prisma/schema.prisma;FILE:docs/development/tdd-guidelines.md;FILE:docs/shared/review-checklist.md;FILE:docs/operations/quality-gates.md,"Contact aggregate implemented with value objects, repository, domain services; artifacts: PrismaContactRepository.ts, context_ack.json; targets: >=90%; verified by: pnpm test",Completed,"Design approved, unit tests ≥90% coverage, repository API stable",2,ARTIFACT:packages/adapters/src/repositories/PrismaContactRepository.ts;ARTIFACT:apps/project-tracker/docs/metrics/_global/phase-validations/PHASE-039-validation.md;EVIDENCE:.specify/sprints/sprint-2/attestations/IFC-102/attestation.json;ARTIFACT:docs/architecture/adr/ADR-019-core-crm-foundation.md;ARTIFACT:docs/planning/prd-core-crm.md,VALIDATE:pnpm test;AUDIT:design-review;AUDIT:code-review,120/240/480,2026-01-13,2026-01-22,100,IFC-002:FS,
IFC-103,Validation,PHASE-039: Account Aggregate and Value Objects,Backend Dev + Tech Lead (STOA-Domain),IFC-002,FILE:.specify/memory/Framework.md;FILE:audit-matrix.yml;POLICY:Bounded contexts defined;POLICY:IFC-002 completed;FILE:docs/planning/DDD-context-map.puml;FILE:packages/db/prisma/schema.prisma;FILE:docs/development/tdd-guidelines.md;FILE:docs/shared/review-checklist.md;FILE:docs/operations/quality-gates.md,"Account aggregate implemented with value objects, repository, domain services; artifacts: PrismaAccountRepository.ts, context_ack.json; targets: >=90%; verified by: pnpm test",Completed,"Design approved, unit tests ≥90% coverage, repository API stable",2,ARTIFACT:packages/adapters/src/repositories/PrismaAccountRepository.ts;ARTIFACT:apps/project-tracker/docs/metrics/_global/phase-validations/PHASE-039-validation.md;EVIDENCE:.specify/sprints/sprint-2/attestations/IFC-103/attestation.json;ARTIFACT:docs/architecture/adr/ADR-019-core-crm-foundation.md;ARTIFACT:docs/planning/prd-core-crm.md,VALIDATE:pnpm test;AUDIT:design-review;AUDIT:code-review,120/240/480,2026-01-15,2026-01-24,100,IFC-002:FS,
IFC-104,Validation,PHASE-039: Opportunity Aggregate and Value Objects,Backend Dev + Tech Lead (STOA-Domain),IFC-002,IMPLEMENTS:FLOW-008;FILE:.specify/memory/Framework.md;FILE:audit-matrix.yml;POLICY:Bounded contexts defined;POLICY:IFC-002 completed;FILE:docs/planning/DDD-context-map.puml;FILE:packages/db/prisma/schema.prisma;FILE:docs/development/tdd-guidelines.md;FILE:docs/shared/review-checklist.md;FILE:docs/operations/quality-gates.md,"Opportunity aggregate implemented with value objects, repository, domain services; artifacts: PrismaOpportunityRepository.ts, context_ack.json; targets: >=90%; verified by: pnpm test",Completed,"Design approved, unit tests ≥90% coverage, repository API stable",3,ARTIFACT:packages/adapters/src/repositories/PrismaOpportunityRepository.ts;ARTIFACT:apps/project-tracker/docs/metrics/_global/phase-validations/PHASE-039-validation.md;EVIDENCE:.specify/sprints/sprint-3/attestations/IFC-104/attestation.json;ARTIFACT:docs/architecture/adr/ADR-019-core-crm-foundation.md;ARTIFACT:docs/planning/prd-core-crm.md,VALIDATE:pnpm test;AUDIT:design-review;AUDIT:code-review,120/240/480,2026-01-25,2026-02-03,100,IFC-002:FS,
IFC-105,Validation,PHASE-039: Task Aggregate and Value Objects,Backend Dev + Tech Lead (STOA-Domain),IFC-002,FILE:.specify/memory/Framework.md;FILE:audit-matrix.yml;POLICY:Bounded contexts defined;POLICY:IFC-002 completed;FILE:docs/planning/DDD-context-map.puml;FILE:packages/db/prisma/schema.prisma;FILE:docs/development/tdd-guidelines.md;FILE:docs/shared/review-checklist.md;FILE:docs/operations/quality-gates.md,"Task aggregate implemented with value objects, repository, domain services; artifacts: PrismaTaskRepository.ts, context_ack.json; targets: >=90%; verified by: pnpm test",Completed,"Design approved, unit tests ≥90% coverage, repository API stable",3,ARTIFACT:packages/adapters/src/repositories/PrismaTaskRepository.ts;ARTIFACT:apps/project-tracker/docs/metrics/_global/phase-validations/PHASE-039-validation.md;EVIDENCE:.specify/sprints/sprint-3/attestations/IFC-105/attestation.json;ARTIFACT:docs/architecture/adr/ADR-019-core-crm-foundation.md;ARTIFACT:docs/planning/prd-core-crm.md,VALIDATE:pnpm test;AUDIT:design-review;AUDIT:code-review,120/240/480,2026-01-27,2026-02-05,100,IFC-002:FS,
IFC-106,Architecture,PHASE-039: Define Hexagonal module boundaries + create canonical packages/application + packages/adapters skeleton,Tech Lead + Backend Dev (STOA-Domain),IFC-002,FILE:.specify/memory/Framework.md;FILE:audit-matrix.yml;ENV:Domain model for all entities implemented;FILE:docs/architecture/hex-boundaries.md;FILE:docs/architecture/repo-layout.md;FILE:docs/planning/DDD-context-map.puml;FILE:packages/db/prisma/schema.prisma,"Application layer created (ports + use-cases); adapters layer created; module boundary rules enforced in CI; architecture tests passing; ADR updated; artifacts: hex-boundaries.md, repo-layout.md, context_ack.json; targets: >=100%",Completed,"No domain code depends on infrastructure, 100% adapters tested",1,ARTIFACT:docs/architecture/hex-boundaries.md;ARTIFACT:docs/architecture/repo-layout.md;ARTIFACT:apps/project-tracker/docs/metrics/_global/phase-validations/PHASE-039-validation.md;EVIDENCE:.specify/sprints/sprint-1/attestations/IFC-106/attestation.json;ARTIFACT:packages/application/src/errors/ApplicationErrors.ts;ARTIFACT:packages/adapters/src/**;ARTIFACT:packages/application/src/**;ARTIFACT:docs/architecture/adr/ADR-047-hexagonal-architecture.md;ARTIFACT:docs/architecture/overview.md;ARTIFACT:tests/architecture/dependency-rules.ts,VALIDATE:pnpm test;AUDIT:code-review,90/180/360,2025-12-28,2026-01-06,100,IFC-002:FS,
IFC-107,Infrastructure,PHASE-039: Implement Repositories and Factories,Backend Dev (STOA-Domain),"IFC-101,IFC-102,IFC-103,IFC-104,IFC-105",FILE:.specify/memory/Framework.md;FILE:audit-matrix.yml;ENV:Domain models implemented;FILE:packages/adapters/src/repositories/PrismaLeadRepository.ts;FILE:packages/adapters/src/repositories/PrismaContactRepository.ts;FILE:packages/adapters/src/repositories/PrismaAccountRepository.ts;FILE:packages/adapters/src/repositories/PrismaOpportunityRepository.ts;FILE:packages/adapters/src/repositories/PrismaTaskRepository.ts,"Repository implementations for all aggregates with Prisma, factories for entity creation; artifacts: context_ack.json; targets: >=90%; verified by: pnpm test, pnpm test:unit",Completed,"Repositories integrated with Prisma, tests coverage >90%",3,ARTIFACT:apps/project-tracker/docs/metrics/_global/phase-validations/PHASE-039-validation.md;EVIDENCE:.specify/sprints/sprint-3/attestations/IFC-107/attestation.json,VALIDATE:pnpm test;VALIDATE:pnpm test:unit;GATE:coverage-gte-90,120/240/480,2026-01-29,2026-02-07,100,"IFC-101:FS,IFC-102:FS,IFC-103:FS,IFC-104:FS,IFC-105:FS",
IFC-108,Validation,Implement Domain Services & Business Logic,Backend Dev (STOA-Domain),IFC-107,FILE:.specify/memory/Framework.md;FILE:audit-matrix.yml;ENV:Domain models and repositories implemented;FILE:docs/architecture/hex-boundaries.md;FILE:docs/planning/DDD-context-map.puml;FILE:docs/development/tdd-guidelines.md;FILE:docs/shared/review-checklist.md,"Domain services implemented for leads, contacts, accounts, opportunities, tasks; artifacts: context_ack.json; targets: >=90%; verified by: pnpm test, pnpm test:integration",Completed,"All business rules enforced, 90% test coverage",4,EVIDENCE:.specify/sprints/sprint-4/attestations/IFC-108/attestation.json,VALIDATE:pnpm test;VALIDATE:pnpm test:integration,120/240/480,2026-02-08,2026-02-17,100,IFC-107:FS,
IFC-109,Testing,"Define TDD Process, Coverage & Review Checklist",QA Lead + Tech Lead (STOA-Quality),IFC-002,FILE:.specify/memory/Framework.md;FILE:audit-matrix.yml;ENV:Testing infrastructure ready;FILE:docs/development/tdd-guidelines.md;FILE:docs/shared/review-checklist.md;FILE:docs/operations/pr-checklist.md;FILE:packages/db/prisma/schema.prisma,"TDD guidelines documented, coverage threshold 90% enforced via CI, code review checklist established; gates: coverage-gte-90",Completed,"Coverage ≥90%, zero lint errors, code review time <24h",2,ARTIFACT:docs/development/tdd-guidelines.md;ARTIFACT:infra/monitoring/ci-coverage-config.yml;ARTIFACT:docs/shared/review-checklist.md;EVIDENCE:.specify/sprints/sprint-2/attestations/IFC-109/attestation.json;ARTIFACT:docs/architecture/adr/ADR-019-core-crm-foundation.md;ARTIFACT:docs/planning/prd-core-crm.md,GATE:coverage-gte-90;VALIDATE:pnpm test,60/120/240,2026-01-11,2026-01-17,100,IFC-002:FS,
IFC-110,Testing,Write Unit & Integration Tests for Domain Entities,QA + Backend Dev (STOA-Quality),"IFC-101,IFC-102,IFC-103,IFC-104,IFC-105",FILE:.specify/memory/Framework.md;FILE:audit-matrix.yml;ENV:Domain models implemented;FILE:docs/architecture/hex-boundaries.md;FILE:docs/planning/DDD-context-map.puml;FILE:docs/development/tdd-guidelines.md;FILE:docs/shared/review-checklist.md;FILE:packages/adapters/src/repositories/PrismaLeadRepository.ts;FILE:packages/adapters/src/repositories/PrismaContactRepository.ts;FILE:packages/adapters/src/repositories/PrismaAccountRepository.ts;FILE:packages/adapters/src/repositories/PrismaOpportunityRepository.ts;FILE:packages/adapters/src/repositories/PrismaTaskRepository.ts,All domain entities have unit and integration tests covering business logic and repository operations; artifacts: context_ack.json; targets: >=90%; gates: coverage-gte-90,Completed,"Coverage ≥90%, tests passing in CI",4,EVIDENCE:.specify/sprints/sprint-4/attestations/IFC-110/attestation.json;ARTIFACT:docs/architecture/adr/ADR-019-core-crm-foundation.md;ARTIFACT:docs/planning/prd-core-crm.md,VALIDATE:pnpm test;GATE:coverage-gte-90,120/240/480,2026-02-10,2026-02-19,100,"IFC-101:FS,IFC-102:FS,IFC-103:FS,IFC-104:FS,IFC-105:FS",
IFC-111,Quality,Set up SonarQube and integrate static analysis into CI/CD,DevOps + QA Lead (STOA-Quality),ENV-005-AI,FILE:.specify/memory/Framework.md;FILE:audit-matrix.yml;POLICY:CI/CD pipeline established;FILE:docs/operations/quality-gates.md;FILE:.github/workflows/ci.yml,"SonarQube server running, CI pipeline pushes analysis, quality gates defined with OWASP and Clean Code rules; artifacts: sonar-project.properties, ci-sonar.yml, sonar-dashboard.md; targets: zero errors",Completed,"Sonar quality gate >= A, zero blocker issues",5,ARTIFACT:infra/monitoring/sonar-project.properties;ARTIFACT:infra/monitoring/ci-sonar.yml;ARTIFACT:docs/shared/sonar-dashboard.md;EVIDENCE:.specify/sprints/sprint-5/attestations/IFC-111/attestation.json,VALIDATE:pnpm typecheck,90/180/360,2026-02-22,2026-03-01,100,ENV-005-AI:FS,
IFC-112,Infrastructure,"Implement blue/green deployment and rollback strategy REOPENED 16/11/2026 (self-claimed done, DoD partly met): DoD 'blue/green deployment pipeline configured': only vercel-rollback.yml and blue-green-metrics.csv; no blue/green pipeline.",ifc-obs,ENV-005-AI,FILE:.specify/memory/Framework.md;FILE:audit-matrix.yml;ENV:Production environment configured;FILE:docs/operations/release-rollback.md;FILE:.github/workflows/ci.yml,"Blue/green deployment pipeline configured, automated health checks, rollback scripts ready; verified by: pnpm test",Backlog,"Deployment switch <1m, no downtime",41,ARTIFACT:artifacts/metrics/blue-green-metrics.csv;EVIDENCE:.specify/sprints/sprint-5/attestations/IFC-112/attestation.json,VALIDATE:pnpm test,90/180/360,2027-07-11,2027-07-24,50,ENV-005-AI:FS,
IFC-113,Security,"Implement secrets management and encryption at rest and in transit REOPENED 16/11/2026 (self-claimed done, DoD partly met): vault-config.yaml describes a dev Vault server at a loopback address, so 'secrets stored in vault' is not shown for production.",ifc-obs,"IFC-072,IFC-098",FILE:.specify/memory/Framework.md;FILE:audit-matrix.yml;POLICY:Database and environment established;FILE:docs/security/zero-trust-design.md;FILE:docs/security/owasp-checklist.md;FILE:packages/db/prisma/schema-audit.prisma,"Secrets stored in vault, encrypted connections (TLS/mTLS), data encryption implemented; artifacts: vault-config.yaml, encryption.ts, key-rotation.ts, encryption-tests.md; targets: >=100%",Backlog,"No secrets in repo, 100% encrypted endpoints",44,ARTIFACT:infra/monitoring/vault-config.yaml;ARTIFACT:apps/api/src/security/encryption.ts;ARTIFACT:apps/api/src/security/key-rotation.ts;ARTIFACT:docs/security/encryption-tests.md;EVIDENCE:.specify/sprints/sprint-10/attestations/IFC-113/attestation.json,VALIDATE:pnpm typecheck;VALIDATE:pnpm test,180/360/720,2027-08-22,2027-09-04,50,"IFC-072:FS,IFC-098:FS",
IFC-114,Security,"Implement API rate limiting and DDoS protection REOPENED 16/11/2026 (self-claimed done, DoD partly met): DoD 'WAF configured for DDoS': no WAF/DDoS configuration in infra/, .github/ or vercel.json.",ifc-obs,"IFC-003,IFC-072",FILE:.specify/memory/Framework.md;FILE:audit-matrix.yml;POLICY:API endpoints defined;FILE:docs/security/zero-trust-design.md;FILE:docs/security/owasp-checklist.md;FILE:docs/shared/review-checklist.md;FILE:docs/operations/pr-checklist.md;FILE:apps/api/src/trpc.ts,"Rate limiting middleware in API, WAF configured for DDoS, tests for request bursts",Backlog,"No request saturates system, response stable under load (44 tests passed)",37,ARTIFACT:apps/api/src/middleware/rate-limit.ts;ARTIFACT:infra/monitoring/waf-config.json;ARTIFACT:artifacts/reports/ddos-test-report.txt;EVIDENCE:.specify/sprints/sprint-7/attestations/IFC-114/attestation.json,VALIDATE:pnpm test,120/240/480,2027-05-16,2027-05-29,50,"IFC-003:FS,IFC-072:FS",
IFC-115,Resilience,Setup backups and disaster recovery plan,ifc-obs,,FILE:.specify/memory/Framework.md;FILE:audit-matrix.yml;ENV:Production environment configured;FILE:docs/shared/multi-region-architecture.puml,"Automated backups scheduled, restore scripts tested, DR documentation prepared; targets: >=100%",Backlog,"RPO <5m, RTO <30m, backup success rate 100%",33,ARTIFACT:artifacts/misc/backup-scripts.sh;ARTIFACT:docs/shared/dr-plan.md;ARTIFACT:artifacts/reports/restore-test-report.csv;EVIDENCE:.specify/sprints/sprint-25/attestations/IFC-115/context_ack.json,VALIDATE:pnpm test,180/360/720,2027-03-21,2027-04-03,0,,
IFC-116,Observability,"Instrument application with OpenTelemetry, unify logs, metrics and traces",ifc-obs,IFC-074,FILE:.specify/memory/Framework.md;FILE:audit-matrix.yml;ENV:OpenTelemetry integrated;ENV:Sentry configured;FILE:docs/architecture/hex-boundaries.md;FILE:infra/monitoring/sentry-project-config.json,"Owner ruling 2026-11-12 (relayed by the IntelliFlow coordinator): the tasks are proven on the real stack, Grafana Cloud + Railway + Vercel; no EasyPanel. Every running service (api and combined-worker on Railway, web on Vercel) emits structured logs, traces and metrics to Grafana Cloud; dashboards, alert rules and SLOs are live there (applied as code from infra/monitoring/grafana/cloud); targets: >=100%, <2min",Backlog,MTTD <2min; 100% services instrumented,28,ARTIFACT:infra/monitoring/otel-config.yaml;ARTIFACT:docs/security/log-schema.md;ARTIFACT:infra/monitoring/grafana/cloud/alert-rules.json;ARTIFACT:infra/monitoring/grafana/cloud/dashboard-production.json;ARTIFACT:infra/monitoring/grafana/cloud/slos.json;EVIDENCE:.specify/sprints/sprint-9/attestations/IFC-116/attestation.json;EVIDENCE:.specify/sprints/sprint-18/attestations/IFC-116/task-tracking.json,VALIDATE:pnpm typecheck,120/240/480,2026-10-06,2027-01-23,75,IFC-074:FS,
IFC-117,AI Insights,"Monitor AI models for drift, latency, hallucination and ROI",AI Specialist + SRE (STOA-Intelligence),"IFC-005,AUTOMATION-002",FILE:.specify/memory/Framework.md;FILE:audit-matrix.yml;ENV:AI pipelines deployed;FILE:packages/db/prisma/schema.prisma;FILE:docs/operations/quality-gates.md;FILE:apps/ai-worker/src/chains/scoring.chain.ts;FILE:infra/monitoring/optimization-loop.yaml,Metrics collected for AI models; dashboards show drift/hallucination; alerts configured; targets: >=5%; AI metrics must be collected by actual code paths and pushed to dashboards,Completed,"Drift detected within 1 day, hallucination rate <5%, ROI tracked",18,ARTIFACT:artifacts/metrics/ai-metrics.json;ARTIFACT:docs/planning/drift-dashboard.md;ARTIFACT:infra/monitoring/alerts-config.yaml;ARTIFACT:infra/monitoring/grafana/cloud/dashboard-ai-models.json;ARTIFACT:infra/monitoring/grafana/cloud/ai-alert-rules.json;ARTIFACT:apps/ai-worker/src/monitoring/otel-ai-metrics.ts;ARTIFACT:apps/ai-worker/src/monitoring/otel-ai-types.ts;ARTIFACT:apps/ai-worker/src/monitoring/drift-stats.ts;ARTIFACT:apps/ai-worker/src/monitoring/drift-scheduler.ts;ARTIFACT:apps/ai-worker/src/monitoring/drift-detector.ts;ARTIFACT:apps/ai-worker/src/monitoring/chain-monitor.ts;ARTIFACT:.github/workflows/grafana-ai-alert-rules.yml;ARTIFACT:tools/scripts/observability/apply-grafana-ai-alert-rules.mjs;ARTIFACT:docs/architecture/adr/ADR-088-ai-model-monitoring-otel-export.md;ARTIFACT:apps/ai-worker/src/monitoring/__tests__/otel-ai-metrics.test.ts;ARTIFACT:apps/ai-worker/src/monitoring/__tests__/chain-monitor.otel.test.ts;ARTIFACT:apps/ai-worker/src/monitoring/__tests__/drift-detector.shift.test.ts;ARTIFACT:apps/ai-worker/src/monitoring/__tests__/drift-scheduler.test.ts;ARTIFACT:apps/ai-worker/src/chains/__tests__/scoring.chain.otel.integration.test.ts;ARTIFACT:tools/scripts/__tests__/apply-grafana-ai-alert-rules.test.ts;ARTIFACT:tools/scripts/__tests__/ai-monitoring-assets.test.ts;EVIDENCE:.specify/sprints/sprint-6/attestations/IFC-117/attestation.json;EVIDENCE:.specify/sprints/sprint-18/attestations/IFC-117/attestation.json,GATE:integration-wired;VALIDATE:pnpm typecheck,180/360/720,2026-10-06,2026-10-09,100,"IFC-005:FS,AUTOMATION-002:FS",
IFC-118,Risk Mgmt,Establish and maintain a risk register with mitigation actions,PM + Tech Lead (STOA-Foundation),"IFC-010,IFC-054",FILE:.specify/memory/Framework.md;FILE:audit-matrix.yml;POLICY:Project charter and backlog defined;FILE:docs/planning/decision-gate-1.md;FILE:artifacts/reports/code-analysis/debt-analysis.json,"Risk register created, risks scored by impact/likelihood, mitigation owners assigned; review scheduled per sprint; artifacts: risk-register.csv, risk-mitigation-plan.md, risk-review-agenda.md",Completed,"25 risks tracked, all mitigation owners assigned, sprint review scheduled",8,ARTIFACT:docs/compliance-and-governance/governance/risk-register.csv;ARTIFACT:docs/shared/risk-mitigation-plan.md;ARTIFACT:docs/shared/risk-review-agenda.md;EVIDENCE:.specify/sprints/sprint-8/attestations/IFC-118/attestation.json,AUDIT:code-review,60/120/240,2026-04-05,2026-04-11,100,"IFC-010:FS,IFC-054:FS",
IFC-119,Planning,"Define recurring backlog refinement, sprint planning, review and retrospective ceremonies",Scrum Master + PM (STOA-Foundation),,FILE:.specify/memory/Framework.md;FILE:audit-matrix.yml;POLICY:Sprint cadence defined;FILE:docs/shared/review-checklist.md;FILE:docs/operations/pr-checklist.md;FILE:docs/operations/project-playbook.md,Ceremony schedule published; agendas and templates created; meeting outcomes documented; targets: >=100%,Completed,Backlog refined ahead of sprint; retro action items completed; schedule adherence 100%,1,ARTIFACT:docs/planning/ceremony-calendar.ics;ARTIFACT:artifacts/reports/sprint-11-completion-report.md;ARTIFACT:docs/planning/templates/backlog-refinement.md;ARTIFACT:docs/planning/templates/daily-standup.md;ARTIFACT:docs/planning/templates/sprint-planning.md;ARTIFACT:docs/planning/templates/sprint-retrospective.md;ARTIFACT:docs/planning/templates/sprint-review.md;EVIDENCE:.specify/sprints/sprint-1/attestations/IFC-119/attestation.json,VALIDATE:pnpm typecheck,60/120/240,2025-12-28,2026-01-03,100,,
